# ПроГрибы

Schedule from MS Project, 2021-10-01 to 2022-07-15, costs in ₽, A marks actual dates.

## Calendars

- Стандартный: Mon-Fri 09:00-13:00, 14:00-18:00; Sat-Sun off.

## Resources

| Resource | Group | Unit | Rate |
| --- | --- | --- | --- |
| Руководитель и администратор проекта | Аппарат управления |  | 5000 |
| Аналитик рисков | Аналитика |  | 1000 |
| Бизнес аналитик | Аналитика |  | 1000 |
| Дизайнер-тестировщик | IT отдел |  | 1000 |
| Контроль качества | Отдел контроля качества |  | 1000 |
| Деньги | Бюдджет | 5 000 000 |  |
| Подрядчик MindBox Алгоритм | Подрядчик |  | 6000 |
| Подрядчик MindBox Приложение |  |  | 6000 |

## Schedule

| ID | WBS | Task | Type | Duration | Start | Finish | Predecessors | Complete | Remaining | Total slack | Constraint | Resources | Work | Actual work | Cost | Actual cost |
| --- | --- | --- | --- | --- | --- | --- | --- | --- | --- | --- | --- | --- | --- | --- | --- | --- |
| 1 | 1 | **ПРОГрибы** |  | 205d | 2021-10-01 A | 2022-07-15 |  | 18% | 168.78d | 0d |  |  | 1612.4h | 440h | 4,882,400 | 728,000 |
| 2 | 1.1 | **Разработка документации проекта** |  | 6d | 2021-10-01 A | 2021-10-08 A |  | 100% |  |  |  |  | 48h | 48h | 48,000 | 48,000 |
| 3 | 1.1.1 | Разработка устава проекта |  | 2d | 2021-10-01 A | 2021-10-04 A |  | 100% |  |  | start no earlier than 2021-10-01 | Контроль качества | 16h | 16h | 16,000 | 16,000 |
| 4 | 1.1.2 | Разработка описания содержания проекта |  | 2d | 2021-10-05 A | 2021-10-06 A | 3 | 100% |  |  |  | Контроль качества | 16h | 16h | 16,000 | 16,000 |
| 5 | 1.1.3 | Разработка плана управления проектом |  | 2d | 2021-10-07 A | 2021-10-08 A | 4 | 100% |  |  |  | Контроль качества | 16h | 16h | 16,000 | 16,000 |
| 6 | 1.1.4 | Конец составления описания проекта | milestone | 0d | 2021-10-08 A | 2021-10-08 A | 5 | 100% |  |  |  |  |  |  |  |  |
| 7 | 1.2 | **Заключение договора с заказчиком** |  | 6d | 2021-10-11 A | 2021-10-18 A |  | 100% |  |  |  |  | 48h | 48h | 176,000 | 176,000 |
| 8 | 1.2.1 | Формирование прототипа договора |  | 2d | 2021-10-11 A | 2021-10-12 A | 6 | 100% |  |  | start no earlier than 2021-10-08 | Руководитель и администратор проекта | 16h | 16h | 80,000 | 80,000 |
| 9 | 1.2.2 | Согласование условий договора внутри компании |  | 2d | 2021-10-13 A | 2021-10-14 A | 8 | 100% |  |  |  | Контроль качества | 16h | 16h | 16,000 | 16,000 |
| 10 | 1.2.3 | Согласование условий договора с заказчиком |  | 2d | 2021-10-15 A | 2021-10-18 A | 9 | 100% |  |  |  | Руководитель и администратор проекта | 16h | 16h | 80,000 | 80,000 |
| 11 | 1.2.4 | Подписание договора с заказчиком | milestone | 0d | 2021-10-18 A | 2021-10-18 A | 10 | 100% |  |  |  |  |  |  |  |  |
| 12 | 1.3 | **Анализ рынка** |  | 30d | 2021-10-19 A | 2021-11-29 |  | 88% | 3.75d | 163d |  |  | 64h | 56h | 64,000 | 56,000 |
| 13 | 1.3.1 | Поиск конкурентов |  | 5d | 2021-10-19 A | 2021-10-25 A | 11 | 100% |  |  |  | Бизнес аналитик | 40h | 40h | 40,000 | 40,000 |
| 14 | 1.3.2 | Составление сравнительной таблицы |  | 3d | 2021-10-26 A | 2021-11-29 | 13 | 67% | 1d | 163d |  | Аналитик рисков | 24h | 16h | 24,000 | 16,000 |
| 15 | 1.4 | **Согласование бизнес требований** |  | 8d | 2021-10-28 A | 2021-11-08 A |  | 100% |  |  |  |  | 80h | 80h | 144,000 | 144,000 |
| 16 | 1.4.1 | Подготовка бизнес требований |  | 2d | 2021-10-28 A | 2021-10-29 A | 14 | 100% |  |  |  | Контроль качества | 16h | 16h | 16,000 | 16,000 |
| 17 | 1.4.2 | Подготовка спецификации |  | 2d | 2021-11-01 A | 2021-11-02 A | 16 | 100% |  |  |  | Контроль качества | 16h | 16h | 16,000 | 16,000 |
| 18 | 1.4.3 | Подготовка технического задания |  | 2d | 2021-11-03 A | 2021-11-04 A | 17 | 100% |  |  |  | Контроль качества | 16h | 16h | 16,000 | 16,000 |
| 19 | 1.4.4 | Утверждение основных бизнес требований |  | 2d | 2021-11-05 A | 2021-11-08 A | 18 | 100% |  |  |  | Контроль качества; Руководитель и администратор проекта | 32h | 32h | 96,000 | 96,000 |
| 20 | 1.4.5 | Согласование бизнес требований | milestone | 0d | 2021-11-08 A | 2021-11-08 A | 19 | 100% |  |  |  |  |  |  |  |  |
| 21 | 1.5 | **Архитектура приложения** |  | 12d | 2021-11-09 A | 2021-11-24 A |  | 100% |  |  |  |  | 112h | 112h | 176,000 | 176,000 |
| 22 | 1.5.1 | Разработка архитектуры клиент-сервера |  | 5d | 2021-11-09 A | 2021-11-15 A | 20 | 100% |  |  |  | Дизайнер-тестировщик | 40h | 40h | 40,000 | 40,000 |
| 23 | 1.5.2 | Подготовка архитектуры |  | 5d | 2021-11-16 A | 2021-11-22 A | 22 | 100% |  |  |  | Дизайнер-тестировщик | 40h | 40h | 40,000 | 40,000 |
| 24 | 1.5.3 | Согласование с заказчиком |  | 2d | 2021-11-23 A | 2021-11-24 A | 23 | 100% |  |  |  | Руководитель и администратор проекта; Дизайнер-тестировщик | 32h | 32h | 96,000 | 96,000 |

| ID | WBS | Task | Type | Duration | Start | Finish | Predecessors | Complete | Remaining | Total slack | Free slack | Constraint | Resources | Work | Actual work | Cost | Actual cost |
| --- | --- | --- | --- | --- | --- | --- | --- | --- | --- | --- | --- | --- | --- | --- | --- | --- | --- |
| 25 | 1.6 | **Подгтовка дизайна приложения** |  | 26d | 2021-11-25 A | 2021-12-31 |  | 99% | 0d | 49d |  |  |  | 96h | 96h | 128,000 | 128,000 |
| 26 | 1.6.1 | Подготовка прототипа |  | 5d | 2021-11-25 A | 2021-12-01 A | 24 | 100% |  |  |  |  | Дизайнер-тестировщик | 40h | 40h | 40,000 | 40,000 |
| 27 | 1.6.2 | Дизайн экранных форм |  | 5d | 2021-12-02 A | 2021-12-08 A | 26 | 100% |  |  |  |  | Дизайнер-тестировщик | 40h | 40h | 40,000 | 40,000 |
| 28 | 1.6.3 | Презентация итоговой версии дизайна заказчику |  | 1d | 2021-12-09 A | 2021-12-09 A | 27 | 100% |  |  |  |  | Дизайнер-тестировщик; Руководитель и администратор проекта | 16h | 16h | 48,000 | 48,000 |
| 29 | 1.6.4 | Подписание договора на реализацию | milestone | 0d | 2021-12-31 | 2021-12-31 | 28 |  |  | 54d | 11d | start no earlier than 2021-12-31 |  |  |  |  |  |
| 30 | 1.7 | **Серверная часть приложения** |  | 44d | 2022-01-17 | 2022-03-18 |  |  |  | 36d |  |  |  | 316.4h |  | 1,898,400 |  |
| 31 | 1.7.1 | Адаптация алгоритма распознавания |  | 28d | 2022-01-17 | 2022-02-23 | 29 |  |  | 43d | 0d | start no earlier than 2022-01-17 | Подрядчик MindBox Алгоритм [50%]; Подрядчик MindBox Приложение [50%] | 224h |  | 1,344,000 |  |
| 32 | 1.7.2 | Функционал системы сообществ |  | 14d | 2022-02-24 | 2022-03-15 | 31 |  |  | 43d | 0d |  | Подрядчик MindBox Приложение [15%] | 16.8h |  | 100,800 |  |
| 33 | 1.7.3 | Функционал вкладки рецептов |  | 7d | 2022-02-24 | 2022-03-04 | 32SS |  |  | 43d | 0d |  | Подрядчик MindBox Приложение [15%] | 8.4h |  | 50,400 |  |
| 34 | 1.7.4 | Функционал личных сообщений |  | 7d | 2022-02-24 | 2022-03-04 | 33SS |  |  | 43d | 0d |  | Подрядчик MindBox Приложение [15%] | 8.4h |  | 50,400 |  |
| 35 | 1.7.5 | Система достижений |  | 7d | 2022-02-24 | 2022-03-04 | 34SS |  |  | 43d | 0d |  | Подрядчик MindBox Приложение [15%] | 8.4h |  | 50,400 |  |
| 36 | 1.7.6 | Совмещение грибных карт |  | 14d | 2022-02-24 | 2022-03-15 | 35SS |  |  | 43d | 0d |  | Подрядчик MindBox Приложение [15%] | 16.8h |  | 100,800 |  |
| 37 | 1.7.7 | Менеджер аккаунтов |  | 14d | 2022-02-24 | 2022-03-15 | 36SS |  |  | 43d | 0d |  | Подрядчик MindBox Приложение [15%] | 16.8h |  | 100,800 |  |
| 38 | 1.7.8 | Реализация биометрического входа |  | 14d | 2022-02-24 | 2022-03-15 | 37SS |  |  | 43d | 2d |  | Подрядчик MindBox Приложение [15%] | 16.8h |  | 100,800 |  |
| 39 | 1.7.9 | Окончание разработки BackEnd | milestone | 0d | 2022-03-18 | 2022-03-18 | 31FF, 32FF, 33FF, 34FF, 35FF, 36FF, 37FF, 38FF |  |  | 41d | 0d | start no earlier than 2022-03-18 |  |  |  |  |  |
| 40 | 1.8 | **Клиентская часть** |  | 59d | 2022-01-17 | 2022-04-08 |  |  |  | 28d |  |  |  | 280h |  | 1,680,000 |  |
| 41 | 1.8.1 | Возможность автономной работы алгоритмв |  | 28d | 2022-01-17 | 2022-02-23 | 31SF |  |  | 57d | 16d | start no earlier than 2022-01-17 | Подрядчик MindBox Алгоритм [50%]; Подрядчик MindBox Приложение [50%] | 224h |  | 1,344,000 |  |
| 42 | 1.8.2 | Разработка экранных форм |  | 7d | 2022-03-18 | 2022-03-28 | 41, 39 |  |  | 41d | 0d |  | Подрядчик MindBox Приложение [25%] | 14h |  | 84,000 |  |
| 43 | 1.8.3 | Реализация функции SOS |  | 7d | 2022-03-18 | 2022-03-28 | 42FF |  |  | 41d | 8d | start no earlier than 2022-03-18 | Подрядчик MindBox Приложение [25%] | 14h |  | 84,000 |  |
| 44 | 1.8.4 | Справочник |  | 7d | 2022-03-18 | 2022-03-28 | 42FF |  |  | 41d | 8d |  | Подрядчик MindBox Приложение [25%] | 14h |  | 84,000 |  |
| 45 | 1.8.5 | Модуль навигации |  | 7d | 2022-03-18 | 2022-03-28 | 42FF |  |  | 41d | 8d |  | Подрядчик MindBox Приложение [25%] | 14h |  | 84,000 |  |
| 46 | 1.8.6 | Окончание разработки приложения | milestone | 0d | 2022-04-08 | 2022-04-08 | 45FF, 43FF, 44FF, 41FF, 42FF |  |  | 33d | 0d | start no earlier than 2022-04-08 |  |  |  |  |  |
| 47 | 1.9 | **Тестирование приложения** |  | 43d | 2022-04-08 | 2022-06-07 |  |  |  | 27d |  |  |  | 448h |  | 448,000 |  |
| 48 | 1.9.1 | Модульное тестирование |  | 14d | 2022-04-08 | 2022-04-27 | 46 |  |  | 33d | 0d | start no earlier than 2022-03-16 | Дизайнер-тестировщик | 112h |  | 112,000 |  |
| 49 | 1.9.2 | Интеграционное тестирование |  | 7d | 2022-04-28 | 2022-05-06 | 48 |  |  | 28d | 0d |  | Дизайнер-тестировщик | 56h |  | 56,000 |  |
| 50 | 1.9.3 | Нагрузочное тестирование |  | 7d | 2022-05-09 | 2022-05-17 | 49 |  |  | 28d | 8d |  | Дизайнер-тестировщик | 56h |  | 56,000 |  |
| 51 | 1.9.4 | Тестирование обновлений |  | 7d | 2022-05-30 | 2022-06-07 | 50 |  |  | 20d | 0d | start no earlier than 2022-05-30 | Дизайнер-тестировщик | 56h |  | 56,000 |  |
| 52 | 1.9.5 | Тестирование интерфейса |  | 7d | 2022-05-09 | 2022-05-17 | 49 |  |  | 35d | 0d |  | Бизнес аналитик | 56h |  | 56,000 |  |
| 53 | 1.9.6 | Тестирование функции SOS |  | 7d | 2022-05-09 | 2022-05-17 | 52SS |  |  | 42d |  |  | Аналитик рисков | 56h |  | 56,000 |  |
| 54 | 1.9.7 | Тестирование функционала экранных форм |  | 7d | 2022-05-19 | 2022-05-30 | 52, 51SF |  |  | 34d |  |  | Бизнес аналитик | 56h |  | 56,000 |  |
| 55 | 1.9.8 | Окончание тестирования приложения | milestone | 0d | 2022-06-07 | 2022-06-07 | 51 |  |  | 20d | 0d | start no earlier than 2022-05-31 |  |  |  |  |  |

| ID | WBS | Task | Type | Duration | Start | Finish | Predecessors | Total slack | Free slack | Constraint | Resources | Work | Cost |
| --- | --- | --- | --- | --- | --- | --- | --- | --- | --- | --- | --- | --- | --- |
| 56 | 1.10 | **Релиз приложения** |  | 27d | 2022-06-08 | 2022-07-15 |  | 0d |  |  |  | 120h | 120,000 |
| 57 | 1.10.1 | Оформить Privacy Policy |  | 3d | 2022-06-08 | 2022-06-10 | 55 | 20d | 0d | start no earlier than 2022-05-04 | Контроль качества | 24h | 24,000 |
| 58 | 1.10.2 | Подготовить маркетинговые материалы |  | 3d | 2022-06-08 | 2022-06-10 | 57SS | 20d | 0d |  | Бизнес аналитик | 24h | 24,000 |
| 59 | 1.10.3 | Обеспечить сборку наличием сертификата цифровой подписи |  | 1d | 2022-06-08 | 2022-06-08 | 58SS | 20d | 0d |  | Дизайнер-тестировщик | 8h | 8,000 |
| 60 | 1.10.4 | Настроить оплату за использование приложения |  | 7d | 2022-06-08 | 2022-06-16 | 59SS | 20d | 0d |  | Бизнес аналитик | 56h | 56,000 |
| 61 | 1.10.5 | Отправить сборку в Google Play |  | 1d | 2022-06-08 | 2022-06-08 | 60SS | 26d |  |  | Бизнес аналитик | 8h | 8,000 |
| 62 | 1.10.6 | DeadLine релиза в Google Play | milestone | 0d | 2022-07-15 | 2022-07-15 | 61 | 0d |  | start no earlier than 2022-07-15 |  |  |  |
